Schedule from MS Project XML, 2026-01-05 to 2027-04-23, A marks actual dates.
Microsoft

## Calendars

- Стандартный: Mon-Fri 09:00-13:00, 14:00-18:00; Sat-Sun off.

## Resources

| Resource |
| --- |
| SQB.Data |
| Турчиев |
| Кенжаев |
| КИнфобеза |
| Инфобеза |
| Руководители |
| SQB.AI |
| SQB.IT |
| Риски |
| HR |
| OPS |
| Маркетинг |
| OPerations |
| Finance |
| Администрация |
| Юрилический деартамент |
| Юридический департамент |
| F\ |
| SQB. |
| vf |
| Департамент стратегии |

## Schedule

| ID | WBS | Task | Type | Duration | Start | Finish | Predecessors | Complete | Remaining | Baseline start | Baseline finish | Total slack | Free slack | Constraint | Resources | Work | Actual work | В Презентацию | Текст10 | Дата2 |
| --- | --- | --- | --- | --- | --- | --- | --- | --- | --- | --- | --- | --- | --- | --- | --- | --- | --- | --- | --- | --- |
| 1 | 1 | **AI ТРАНСФОРМАЦИЯ SQB** |  | 339.88d? | 2026-01-05 A | 2027-04-23 |  | 13% | 295.84d? | 2026-01-05 | 2027-02-05 |  |  |  |  | 59224.4h | 6576.48h |  |  |  |
| 2 | 1.1 | **ДАННЫЕ** |  | 322.88d? | 2026-01-05 A | 2027-03-31 |  | 19% | 261.63d? | 2026-01-05 | 2026-11-20 | 17d |  |  | SQB.Data | 16607.2h | 2486.88h | 1 |  |  |
| 3 | 1.1.1 | **Финализация стратегии управления данными** |  | 111.88d | 2026-01-05 A | 2026-06-09 |  | 99% | 0d | 2026-01-05 | 2026-06-09 | 0d |  |  | SQB.Data | 2124h | 1675.4h |  |  |  |
| 4 | 1.1.1.1 | Разработка содержания стратегии управления данными (GlowBite) |  | 80.88d | 2026-01-05 A | 2026-04-27 A |  | 100% |  | 2026-01-05 | 2026-03-31 |  |  | finish no earlier than 2026-04-27 | SQB.Data | 647h | 647h |  | 1.1. | 2026-05-25 |
| 5 | 1.1.1.2 | Финализация стратегии управления данными (GlowBite) |  | 49.88d | 2026-04-01 A | 2026-06-09 A | 4 | 100% |  | 2026-04-01 | 2026-06-09 |  |  |  | SQB.Data | 399h | 399h |  | 1.3. | 2026-05-25 |
| 6 | 1.1.1.3 | Создание архитектуры Корпоративной модели данных Datalake |  | 22.88d | 2026-05-04 A | 2026-06-03 A | 4 | 100% |  | 2026-04-01 | 2026-04-14 |  |  | finish no earlier than 2026-05-15 | SQB.Data | 183h | 183h |  | 1.2. |  |
| 7 | 1.1.2 | **Создание общего Datalаke и корпоративной модели данных и витрин – ключевой проект.** |  | 197.88d? | 2026-04-01 A | 2027-01-01 |  | 17% | 164.58d? | 2026-04-01 | 2026-10-12 | 79d |  |  | SQB.IT | 2843h | 478.35h | 1 |  |  |
| 8 | 1.1.2.1 | Определить источники наполнения Корпоративной модели данных: внутренних, внешних открытых, внешних ограниченных, неструктурированных. |  | 17d | 2026-04-15 A | 2026-05-07 A |  | 100% |  | 2026-04-15 | 2026-04-28 |  |  |  | SQB.Data | 136h | 136h |  | 1.4. | 2027-03-10 |
| 9 | 1.1.2.2 | Определить состав и технический стек КМД |  | 4.5d | 2026-04-01 A | 2026-04-07 A |  | 100% |  | 2026-04-01 | 2026-05-01 |  |  |  | SQB.Data | 36h | 36h |  | 1.5. |  |
| 10 | 1.1.2.3 | Решение о ресурсах реализации (внутренние/внешние/подрядчики/тендер) |  | 5d | 2026-04-08 A | 2026-04-15 A | 9 | 100% |  | 2026-05-01 | 2026-05-08 |  |  | finish no earlier than 2026-04-15 | SQB.Data | 40h | 40h |  | 1.6. | 2027-03-10 |
| 11 | 1.1.2.4 | Проведение тендера по выбору исполнителя, утверждение задачи |  | 35d | 2026-06-15 | 2026-08-03 | 10 |  |  | 2026-05-08 | 2026-06-26 | 112d | 33d | finish no earlier than 2026-08-03 | SQB.IT | 280h |  |  | 1.7. | 2027-03-10 |
| 12 | 1.1.2.5 | Реализация DataLake: MVP |  | 75d | 2026-09-17 | 2026-12-31 | 11 |  |  | 2026-06-26 | 2026-10-09 | 79d | 0d | finish no earlier than 2026-12-31 | SQB.IT | 600h |  |  | 1.8. | 2027-03-10 |
| 13 | 1.1.2.6 | Пилотирование, результаты |  | 20d | 2026-12-03 | 2026-12-31 | 12FF |  |  | 2026-09-11 | 2026-10-09 | 79d | 0d |  | SQB.IT | 160h |  |  | 1.9. | 2027-03-10 |
| 14 | 1.1.2.7 | DataLake готов в объёме MVP | milestone | 1d? | 2026-12-31 | 2027-01-01 | 13 |  |  | 2026-10-09 | 2026-10-12 | 79d | 0d |  | SQB.IT | 8h |  |  |  | 2027-03-10 |
| 15 | 1.1.3 | **Создание в рамках DataLake платформы работы со структурированными и неструктурированными данными.** |  | 228d? | 2026-04-27 A | 2027-03-11 |  | 7% | 211.71d? | 2026-05-01 | 2026-11-02 | 30d |  |  | SQB.Data | 2944h | 210.28h | 1 |  |  |
| 16 | 1.1.3.1 | Определить состав и технический стек SQB.Data |  | 5d | 2026-04-27 A | 2026-05-04 A | 4, 9 | 100% |  | 2026-05-01 | 2026-05-22 |  |  |  | SQB.Data | 40h | 40h |  | 1.10. | 2027-03-10 |
| 17 | 1.1.3.2 | Решение о ресурсах реализации (внутренние/внешние/подрядчики/тендер) |  | 5d | 2026-05-04 A | 2026-05-11 A | 16 | 100% |  | 2026-05-22 | 2026-05-29 |  |  |  | SQB.Data | 40h | 40h |  | 1.11. | 2027-03-10 |
| 18 | 1.1.3.3 | Проведение тендера по выбору исполнителя, утверждение задачи |  | 47d | 2026-05-11 | 2026-07-15 | 17 |  |  | 2026-05-29 | 2026-07-17 | 125d | 95d |  | SQB.Data | 376h |  |  | 1.12. | 2027-03-10 |
| 19 | 1.1.3.4 | Реализация SQB.Data: MVP |  | 75d | 2026-11-25 | 2027-03-10 | 18 |  |  | 2026-07-17 | 2026-10-30 | 30d | 0d | finish no earlier than 2027-03-10 | SQB.Data | 600h |  |  | 1.15. | 2027-03-10 |
| 20 | 1.1.3.5 | Пилотирование, результаты |  | 7d | 2027-03-01 | 2027-03-10 | 19FF |  |  | 2026-09-30 | 2026-10-30 | 30d | 0d |  | SQB.Data | 56h |  |  | 1.16. | 2027-03-10 |
| 21 | 1.1.3.6 | SQB.Data готова в объёме MVP | milestone | 1d? | 2027-03-10 | 2027-03-11 | 13, 20 |  |  | 2026-10-30 | 2026-11-02 | 30d | 0d |  | SQB.Data | 8h |  |  | 1.17. | 2027-03-10 |
| 22 | 1.1.4 | Разработка и внедрение комлпекса метрик управления даннными |  | 75d | 2026-09-17 | 2026-12-31 | 12FF |  |  | 2026-06-26 | 2026-10-09 | 81d |  |  | SQB.Data | 600h |  |  | 1.13. | 2027-03-10 |
| 23 | 1.1.5 | Интеграция описания данных с базой знаний |  | 75d | 2026-09-17 | 2026-12-31 | 12FF |  |  | 2026-06-26 | 2026-10-09 | 81d |  |  | SQB.Data | 600h |  |  | 1.14. | 2027-03-10 |
| 24 | 1.1.6 | **Создание ролевой модели в Банке** |  | 190.88d | 2026-06-08 | 2027-03-01 |  |  |  | 2026-06-08 | 2026-10-01 | 0d |  |  | SQB.IT | 2446h |  | 1 |  |  |
| 25 | 1.1.6.1 | Картирование ролевой модели | manual | 60.88d | 2026-06-08 | 2026-08-31 | 118 |  |  | 2026-06-08 | 2026-07-03 |  |  |  | SQB.IT | 487h |  |  | 1.18. | 2026-07-03 |
| 26 | 1.1.6.2 | Создать ролевую модель для работы с данными внутри Банка для ухода от персонифицированных доступов. |  | 15d | 2026-11-25 | 2026-12-16 | 12SS, 19SS, 25 |  |  | 2026-07-17 | 2026-08-07 | 15d | 0d |  | SQB.Data | 120h |  |  | 1.19. | 2026-08-07 |
| 27 | 1.1.6.3 | Организовать процедуры доступа в соответствии с ролевой моделью |  | 25d | 2026-12-16 | 2027-01-20 | 26 |  |  | 2026-08-07 | 2026-09-11 | 53d | 14d |  | SQB.IT | 200h |  |  | 1.22. | 2026-09-11 |
| 28 | 1.1.6.4 | Расширение ролевой модели на ИТ-окружение Банка |  | 14d | 2027-02-09 | 2027-03-01 | 27 |  |  | 2026-09-11 | 2026-10-01 | 39d |  | finish no earlier than 2027-03-01 | SQB.IT | 112h |  |  | 1.24. | 2026-10-01 |
| 29 | 1.1.7 | Организовать процедуры обогащения хранилища за счёт новых источников данных внутри Банка и процедуры импорта внешних данных. |  | 60d | 2026-11-25 | 2027-02-17 | 12SS, 19SS, 25 |  |  | 2026-07-17 | 2026-10-09 | -12.38d | 0d |  | SQB.IT; SQB.Data | 960h |  |  | 1.25. | 2026-10-09 |
| 30 | 1.1.8 | Организовать процедуры защиты персональных и конфиденциальных данных в соответствии с ролевой моделью. |  | 60d | 2026-11-25 | 2027-02-17 | 12SS, 19SS, 25 |  |  | 2026-07-17 | 2026-10-09 | 47d |  |  | Инфобеза | 480h |  |  | 1.26. | 2026-10-09 |
| 31 | 1.1.9 | Создать в подразделениях, SQB.AI и SQB.Data роли data-инженера и data-аналитика. |  | 30d | 2026-11-25 | 2027-01-06 | 12SS, 19SS, 25 |  |  | 2026-07-17 | 2026-08-28 | 30d | 15d | finish no earlier than 2026-12-31 | Руководители | 240h |  |  | 1.20. | 2026-12-01 |
| 32 | 1.1.10 | Каскадировать ролевую модель на потребление инфраструктуры |  | 30d | 2026-12-16 | 2027-01-27 | 12SS, 19SS, 25, 26 |  |  | 2026-08-07 | 2026-09-18 | 15d | 0d |  | SQB.IT | 240h |  |  | 1.21. | 2026-09-18 |
| 33 | 1.1.11 | Каскадировать ролевую модель на доступы к АС | manual | 59.38d | 2026-10-09 | 2026-12-31 | 29, 25, 26 |  |  | 2026-10-09 | 2026-11-20 |  |  |  | SQB.IT | 475h |  |  | 1.28. | 2026-11-23 |
| 34 | 1.1.12 | Организовать подбор, найм и развитие дата-инженеров. |  | 45d | 2027-01-27 | 2027-03-31 | 31, 32 |  |  | 2026-09-18 | 2026-11-20 | 15d | 0d | finish no earlier than 2027-03-01 | Руководители | 360h |  |  | 1.29. | 2026-11-20 |
| 35 | 1.1.13 | Ролевая модель запущена | milestone, manual | 1d? | 2026-10-12 | 2026-10-12 | 34, 32 |  |  | 2026-10-12 | 2026-10-12 |  |  |  | SQB.IT | 8h |  |  | 1.27. | 2026-10-12 |
| 36 | 1.1.14 | DataLake, SQB.Data и ролевая модель готовы в объёме MVP | milestone, manual | 1d? | 2026-11-30 | 2026-12-01 | 35, 21, 14 |  |  | 2026-09-10 | 2026-09-10 |  |  |  |  |  |  |  | 1.23. | 2026-12-01 |

| ID | WBS | Task | Type | Duration | Start | Finish | Predecessors | Complete | Remaining | Baseline start | Baseline finish | Total slack | Free slack | Constraint | Resources | Work | Actual work | В Презентацию | Текст10 | Дата2 | Текст2 |
| --- | --- | --- | --- | --- | --- | --- | --- | --- | --- | --- | --- | --- | --- | --- | --- | --- | --- | --- | --- | --- | --- |
| 37 | 1.2 | **ИНФРАСТРУКТУРА** |  | 244d? | 2026-04-06 A | 2027-03-12 |  | 5% | 230.65d? | 2026-04-03 | 2026-12-18 | 30d |  |  | SQB.IT | 8132h | 326.83h | 1 |  |  |  |
| 38 | 1.2.1 | Определить объёмы и сроки потребления инфраструктурных потребностей на 2026 год. |  | 84d | 2026-04-06 A | 2026-07-31 |  | 15% | 71.5d | 2026-04-03 | 2026-05-08 | 0d |  | finish no earlier than 2026-07-31 | SQB.IT | 672h | 100h |  | 2.1. | 2026-05-11 |  |
| 39 | 1.2.2 | Провести при необходимости бюджетные корректировки бизнес-плана. |  | 15d | 2026-05-11 A | 2026-08-12 | 38 | 50% | 7.5d | 2026-05-08 | 2026-05-29 | 182.5d |  |  | SQB.IT | 120h | 60h |  | 2.2. | 2026-06-01 |  |
| 40 | 1.2.3 | Разработать механизм бюджетирования, учёта и управления утилизацией мощностей |  | 15d | 2026-07-31 | 2026-08-21 | 38 |  |  | 2026-05-08 | 2026-05-29 | 175d |  |  | SQB.IT | 120h |  |  | 2.3. | 2026-06-01 |  |
| 41 | 1.2.4 | Получение первых инфраструктурных мощностей |  | 72.5d | 2026-05-14 A | 2026-10-30 | 38 | 10% | 65d | 2026-05-08 | 2026-05-29 | 125d |  | finish no earlier than 2026-10-30 | SQB.IT | 580h | 60h | 1 | 2.4. | 2026-06-01 |  |
| 42 | 1.2.5 | **Реализовать SQB.Infra – проект аппаратного окружения серверов для хранения данных и исполнения моделей – приоритетный проект.** |  | 160d? | 2026-07-31 | 2027-03-12 |  |  |  | 2026-05-08 | 2026-12-18 | 10d |  |  | SQB.IT | 4688h |  | 1 | 2.5. | 2026-05-11 |  |
| 43 | 1.2.5.1 | Решение о ресурсах реализации SQB.Infra (внутренние / внешние / подрядчики / тендер). |  | 10d | 2026-07-31 | 2026-08-14 | 38 |  |  | 2026-05-08 | 2026-05-22 | 10d | 0d |  | SQB.IT | 80h |  |  | 2.5. | 2026-12-22 |  |
| 44 | 1.2.5.2 | Определение объёма задачи с учётом UzInfoCom |  | 20d | 2026-08-14 | 2026-09-11 | 43 |  |  | 2026-05-22 | 2026-06-19 | 10d | 0d |  | SQB.IT | 160h |  |  | 2.6. | 2026-06-22 |  |
| 45 | 1.2.5.3 | Постановка задачи на инфраструктуру, проведение тендера по выбору исполнителя. |  | 40d | 2026-09-11 | 2026-11-06 | 44 |  |  | 2026-06-19 | 2026-08-14 | 50d | 0d |  | SQB.IT | 320h |  |  | 2.7. | 2026-08-17 |  |
| 46 | 1.2.5.4 | Реализация SQB.Infra: MVP |  | 45d | 2026-11-06 | 2027-01-08 | 45 |  |  | 2026-08-14 | 2026-10-16 | 55d | 0d |  | SQB.IT | 360h |  |  | 2.8. | 2026-10-19 |  |
| 47 | 1.2.5.5 | Пилотирование, результаты |  | 20d | 2027-01-08 | 2027-02-05 | 46 |  |  | 2026-10-16 | 2026-11-13 | 55d | 0d |  | SQB.IT | 160h |  |  | 2.9. | 2026-11-16 |  |
| 48 | 1.2.5.6 | SQB.Infra готова в объёме MVP | milestone | 0d | 2027-02-05 | 2027-02-05 | 47 |  |  | 2026-11-13 | 2026-11-13 | 55d |  |  | SQB.IT |  |  |  | 2.10. | 2026-11-16 |  |
| 49 | 1.2.5.7 | **Реализовать корпоративную среду исполнения моделей (SQB.AI) – приоритетный проект.** |  | 110d? | 2026-09-11 | 2027-02-12 |  |  |  | 2026-06-19 | 2026-11-23 | 10d |  |  | SQB.IT | 1768h |  | 1 |  |  |  |
| 50 | 1.2.5.7.1 | Решение о ресурсах реализации платформы исполнения SQB.AI (внутренние/внешние/подрядчики/тендер). |  | 5d | 2026-09-11 | 2026-09-18 | 44 |  |  | 2026-06-19 | 2026-06-26 | 10d | 0d |  | SQB.IT | 40h |  |  | 2.11. | 2026-06-26 |  |
| 51 | 1.2.5.7.2 | Постановка задачи на среду исполнения моделей (приоритетно – внутри SQB.Infra), проведение тендера по выбору исполнителя. |  | 45d | 2026-09-18 | 2026-11-20 | 50 |  |  | 2026-06-26 | 2026-08-28 | 40d | 0d |  | SQB.IT | 360h |  |  | 2.12. | 2026-08-31 |  |
| 52 | 1.2.5.7.3 | Реализация среды исполнения моделей |  | 45d | 2026-11-20 | 2027-01-22 | 51 |  |  | 2026-08-28 | 2026-10-30 | 49d | 0d |  | SQB.IT | 360h |  |  | 2.14. | 2026-11-02 |  |
| 53 | 1.2.5.7.4 | Пилотирование, результаты |  | 15d | 2027-01-22 | 2027-02-12 | 52 |  |  | 2026-10-30 | 2026-11-20 | 49d | 0d |  | SQB.IT | 120h |  |  | 2.15. | 2026-11-23 |  |
| 54 | 1.2.5.7.5 | SQB.AI готова в объёме MVP | milestone, manual | 1d? | 2026-11-20 | 2026-11-23 | 53 |  |  | 2026-11-20 | 2026-11-23 |  |  |  | SQB.IT | 8h |  |  | 2.16. | 2026-11-23 |  |
| 55 | 1.2.5.8 | Разработка и внедрение комплекса инфраструктурных метрик |  | 25d | 2026-12-04 | 2027-01-08 | 45, 51, 62 |  |  | 2026-09-11 | 2026-10-16 | 30d | 0d |  | SQB.IT | 200h |  |  | 2.13. | 2026-10-19 |  |
| 56 | 1.2.5.9 | Внедрение SLA (Service Level Agreement) для ключевых платформенных решений Банка на основе стандартов ITSM и ISO |  | 45d | 2027-01-08 | 2027-03-12 | 55 |  |  | 2026-10-16 | 2026-12-18 | 30d |  |  | SQB.IT | 360h |  |  | 2.17. | 2026-12-21 |  |
| 57 | 1.3 | **ИНСТРУМЕНТЫ И МОДЕЛИ** |  | 180.12d? | 2026-07-31 A | 2027-04-11 |  | 4% | 172.39d? | 2026-05-08 | 2027-02-05 | 9.88d |  |  |  | 8762h | 338.91h | 1 |  |  |  |
| 58 | 1.3.1 | **Реализация корпоративной Базы знаний (ключевой проект)** |  | 130.12d? | 2026-07-31 | 2027-01-31 |  |  |  | 2026-05-08 | 2026-11-06 | 0d |  |  | SQB.IT | 4004h |  | 1 |  |  |  |
| 59 | 1.3.1.1 | Определение технического стека на 2026 для корпоративной базы знаний. |  | 30d | 2026-07-31 | 2026-09-11 | 38 |  |  | 2026-05-08 | 2026-06-19 | 0d |  | start no earlier than 2026-04-13 | SQB.IT | 240h |  |  | 3.1. | 2026-06-22 |  |
| 60 | 1.3.1.2 | Определение объёмов и календаризации инфраструктурных потребностей |  | 5d | 2026-09-11 | 2026-09-18 | 59 |  |  | 2026-06-19 | 2026-06-26 | 0d |  |  | SQB.IT | 40h |  |  | 3.2. | 2026-06-29 | Риски - Чт 20.08.26 |
| 61 | 1.3.1.3 | Решение о ресурсах реализации SQB.Infra (внутренние / внешние / подрядчики / тендер). |  | 10d | 2026-09-18 | 2026-10-02 | 60 |  |  | 2026-06-26 | 2026-07-10 | 0d |  |  | SQB.IT | 80h |  |  | 3.3. | 2026-07-13 |  |
| 62 | 1.3.1.4 | Постановка задачи на среду исполнения моделей (приоритетно – внутри SQB.Infra), проведение тендера по выбору исполнителя. |  | 45d | 2026-10-02 | 2026-12-04 | 50, 61 |  |  | 2026-07-10 | 2026-09-11 | 0d |  |  | SQB.AI | 360h |  |  | 3.4. | 2026-09-14 |  |
| 63 | 1.3.1.5 | Реализация Репозитория моделей и инструментов |  | 40d | 2026-12-04 | 2027-01-29 | 62 |  |  | 2026-09-11 | 2026-11-06 | 0d |  |  | SQB.AI | 320h |  |  | 3.7. | 2026-11-09 |  |
| 64 | 1.3.1.6 | Реализация Библиотеки бизнес-знаний |  | 40d | 2026-12-04 | 2027-01-29 | 62 |  |  | 2026-09-11 | 2026-11-06 | 0d |  | finish no earlier than 2026-11-10 | SQB.AI | 320h |  |  | 3.8. | 2026-11-10 |  |
| 65 | 1.3.1.7 | Реализация Библиотеки знаний о данных |  | 40d | 2026-12-04 | 2027-01-29 | 62 |  |  | 2026-09-11 | 2026-11-06 | 16.38d | 0d | finish no earlier than 2026-11-16 | SQB.AI | 320h |  |  | 3.9. | 2026-11-16 |  |
| 66 | 1.3.1.8 | Реализация Репозитория кода |  | 40d | 2026-12-04 | 2027-01-29 | 62 |  |  | 2026-09-11 | 2026-11-06 | 29d | 0d | finish no earlier than 2026-11-23 | SQB.AI | 320h |  |  | 3.10. | 2026-11-23 |  |
| 67 | 1.3.1.9 | Реализация Библиотеки проектных знаний |  | 40d | 2026-12-04 | 2027-01-29 | 62 |  |  | 2026-09-11 | 2026-11-06 | 40d | 0d | finish no earlier than 2026-11-30 | SQB.AI | 320h |  |  | 3.11. | 2026-11-30 |  |
| 68 | 1.3.1.10 | Организация процедур владения знаниями (наполнения, актуализации) корпоративной базы знаний, на всех этапах цикла работы с данными. |  | 75d | 2026-10-02 | 2027-01-15 | 62SS |  |  | 2026-07-10 | 2026-10-23 | 70d |  |  | OPerations | 600h |  |  | 3.6 | 2026-10-23 |  |
| 69 | 1.3.1.11 | Корпоративная база знаний готова в объёме MVP | milestone, manual | 6.25d? | 2027-01-25 | 2027-01-31 | 66, 65, 63, 64 |  |  | 2026-09-25 | 2026-09-28 |  |  |  | SQB.AI | 43h |  |  | 3.5. | 2026-09-28 |  |

| ID | WBS | Task | Type | Duration | Start | Finish | Predecessors | Complete | Remaining | Baseline start | Baseline finish | Total slack | Free slack | Constraint | Resources | Work | Actual work | В Презентацию | Текст10 | Дата2 |
| --- | --- | --- | --- | --- | --- | --- | --- | --- | --- | --- | --- | --- | --- | --- | --- | --- | --- | --- | --- | --- |
| 70 | 1.3.2 | **Создать и запустить центр инструментальной компетенции Банка.** |  | 105.12d? | 2026-11-13 A | 2027-04-11 |  | 18% | 86.31d? | 2026-11-06 | 2027-02-05 | 9.88d |  |  | SQB.AI | 2182h | 338.91h | 1 | 3.13. | 2027-02-05 |
| 71 | 1.3.2.1 | Ввести в контур Банка open source инструменты: библиотеки, модели, компоненты, знания. Обеспечить их доступность через Библиотеку. |  | 15d | 2027-01-29 | 2027-02-19 | 63 |  |  |  |  | 0d |  |  | SQB.AI | 120h |  |  | 3.14. | 2026-11-30 |
| 72 | 1.3.2.2 | Развернуть корпоративный портал заказа инструментов. |  | 64d | 2026-11-13 A | 2027-04-08 | 71 | 47% | 34d |  |  | 7.38d | 0d | finish no earlier than 2027-02-11 | SQB.IT | 512h | 240h |  | 3.19. | 2027-02-11 |
| 73 | 1.3.2.3 | Организовать процесс верификации информации об инструментах и моделях в Базе знаний. |  | 30d | 2027-01-29 | 2027-03-12 | 71SS |  |  |  |  | 30d |  | finish no earlier than 2027-02-08 | SQB.AI | 240h |  |  | 3.15. | 2027-02-08 |
| 74 | 1.3.2.4 | Разработать и внедрить репозиторий датасетов: импортированных внешних, публичных, внутренних открытых, внутренних sensitive. |  | 25d | 2027-01-29 | 2027-03-05 | 65 |  |  |  |  | 16.38d | 0d |  | SQB.AI | 200h |  |  | 3.16. | 2026-12-21 |
| 75 | 1.3.2.5 | Обеспечить доступность датасетов для реализации модельной функции |  | 15d | 2027-03-05 | 2027-03-26 | 74 |  |  |  |  | 16.38d | 7.38d |  | SQB.AI | 120h |  |  | 3.17. | 2027-01-11 |
| 76 | 1.3.2.6 | Обеспечить переиспользование компонент моделей внутри Банка. |  | 15d | 2027-03-18 | 2027-04-08 | 72FF |  |  |  |  | 7.38d | 0d |  | SQB.AI | 120h |  |  | 3.18. | 2027-02-11 |
| 77 | 1.3.2.7 | Реализован центр инструментальной компетенции Банка | milestone, manual | 4.5d? | 2027-04-07 | 2027-04-11 | 76, 74, 72, 71, 75 |  |  |  |  |  |  |  | SQB.AI | 29h |  |  |  | 2027-02-11 |
| 78 | 1.3.3 | **Организовать бизнес-функцию управления модельными рисками и валидации моделей (с калибровкой и допустимыми значениями рисков).** |  | 151d? | 2026-08-14 | 2027-03-15 |  |  |  | 2026-06-22 | 2026-12-21 | 29d |  |  | Риски | 2576h |  | 1 |  |  |
| 79 | 1.3.3.1 | Создание структурного подразделеня управления валидации и управления МР |  | 25d | 2026-08-14 | 2026-09-18 | 101 |  |  | 2026-06-22 | 2026-07-24 | 145d | 0d |  | Риски | 200h |  |  | 3.20. | 2026-07-27 |
| 80 | 1.3.3.2 | Подбор специалистов |  | 15d | 2026-08-28 | 2026-09-18 | 79FF |  |  | 2026-07-06 | 2026-07-24 | 155d |  | finish no earlier than 2026-07-30 | Риски | 120h |  |  | 3.21. | 2026-12-25 |
| 81 | 1.3.3.3 | Утвердить Model Risk Management Framework (MRMF) |  | 10d | 2026-09-18 | 2026-10-02 | 79 |  |  | 2026-07-27 | 2026-08-07 | 145d |  | finish no earlier than 2026-08-10 | Риски | 80h |  |  | 3.22. | 2027-01-01 |
| 82 | 1.3.3.4 | Создание реестра моделей (Model Inventory) и классификации моделей |  | 10d | 2027-01-15 | 2027-01-29 | 66FF |  |  | 2026-10-23 | 2026-11-06 | 29d | 0d |  | Риски | 80h |  |  | 3.23. | 2027-02-01 |
| 83 | 1.3.3.5 | **Разработка пайплайнов валидации для моделей различных типов** |  | 10d | 2027-01-29 | 2027-02-12 |  |  |  | 2026-11-06 | 2026-11-20 | 29d | 10d |  | Риски | 720h |  |  | 3.24. | 2027-03-01 |
| 84 | 1.3.3.5.1 | Model Development |  | 10d | 2027-01-29 | 2027-02-12 | 82 |  |  | 2026-11-06 | 2026-11-20 | 39d |  |  | Риски | 80h |  |  | 3.24. | 2027-03-01 |
| 85 | 1.3.3.5.2 | Model Documentation |  | 10d | 2027-01-29 | 2027-02-12 | 82 |  |  | 2026-11-06 | 2026-11-20 | 39d |  |  | Риски | 80h |  |  | 3.24. | 2027-03-01 |
| 86 | 1.3.3.5.3 | Independent Validation |  | 10d | 2027-01-29 | 2027-02-12 | 82 |  |  | 2026-11-06 | 2026-11-20 | 39d |  |  | Риски | 80h |  |  | 3.24. | 2027-03-01 |
| 87 | 1.3.3.5.4 | Approval |  | 10d | 2027-01-29 | 2027-02-12 | 82 |  |  | 2026-11-06 | 2026-11-20 | 39d |  |  | Риски | 80h |  |  | 3.24. | 2027-03-01 |
| 88 | 1.3.3.5.5 | Implementation |  | 10d | 2027-01-29 | 2027-02-12 | 82 |  |  | 2026-11-06 | 2026-11-20 | 39d |  |  | Риски | 80h |  |  | 3.24. | 2027-03-01 |
| 89 | 1.3.3.5.6 | Monitoring |  | 10d | 2027-01-29 | 2027-02-12 | 82 |  |  | 2026-11-06 | 2026-11-20 | 39d |  |  | Риски | 80h |  |  | 3.24. | 2027-03-01 |
| 90 | 1.3.3.5.7 | Recalibration |  | 10d | 2027-01-29 | 2027-02-12 | 82 |  |  | 2026-11-06 | 2026-11-20 | 39d |  |  | Риски | 80h |  |  | 3.24. | 2027-03-01 |
| 91 | 1.3.3.5.8 | Retirement |  | 10d | 2027-01-29 | 2027-02-12 | 82 |  |  | 2026-11-06 | 2026-11-20 | 29d | 0d |  | Риски | 80h |  |  | 3.24. | 2027-03-01 |
| 92 | 1.3.3.6 | Утверждение метрик валидации для моделей (кредитных, предиктивных, генеративных) |  | 10d | 2027-02-12 | 2027-02-26 | 82, 91 |  |  | 2026-11-20 | 2026-12-04 | 29d | 0d |  | Риски | 80h |  |  | 3.25. |  |
| 93 | 1.3.3.7 | Утверждение целевых метрик валидации |  | 5d | 2027-02-26 | 2027-03-05 | 83, 92 |  |  | 2026-12-04 | 2026-12-11 | 29d | 0d |  | Риски | 40h |  |  | 3.26. |  |
| 94 | 1.3.3.8 | Утверждение процедур модельного аудита |  | 5d | 2027-03-05 | 2027-03-12 | 83, 93 |  |  | 2026-12-11 | 2026-12-18 | 29d | 0d |  | Риски | 40h |  |  | 3.27. |  |
| 95 | 1.3.3.9 | Реализована функция модельной валидации | milestone | 1d? | 2027-03-12 | 2027-03-15 | 94 |  |  | 2026-12-18 | 2026-12-21 | 29d |  |  | Риски | 8h |  |  | 3.28. |  |

Notes:
- 92: Текст2: Пн 30.11.26
- 93: Текст2: Чт 10.12.26
- 94: Текст2: Вс 20.12.26
- 95: Текст2: Риски - 31.01.27. Проверка должна проводиться независимой от риска командой. ИТ/ДАННЫЕ также должны быть дополнительным исполнителем. -

| ID | WBS | Task | Type | Duration | Start | Finish | Predecessors | Complete | Remaining | Baseline start | Baseline finish | Total slack | Free slack | Constraint | Resources | Work | Actual work | В Презентацию | Текст10 | Дата2 | Текст2 |
| --- | --- | --- | --- | --- | --- | --- | --- | --- | --- | --- | --- | --- | --- | --- | --- | --- | --- | --- | --- | --- | --- |
| 96 | 1.4 | **ЛЮДИ И КОМПЕТЕНЦИИ** |  | 195.88d? | 2026-04-06 A | 2027-01-04 |  | 13% | 170.5d? | 2026-04-06 | 2026-11-16 | 79d |  |  | SQB.AI | 6375.17h | 801.05h | 1 |  |  |  |
| 97 | 1.4.1 | Провести оценку текущего уровня (асессмент) квалификации текущих разработчиков, инженеров, специалистов Банка |  | 25.88d | 2026-04-06 A | 2026-05-11 A |  | 100% |  | 2026-04-06 | 2026-05-08 |  |  | finish no earlier than 2026-05-11 | SQB.AI | 207h | 207h |  | 4.1. | 2026-05-11 |  |
| 98 | 1.4.2 | Сфоримровать перечень специальностей, гэп-анализ соответствия кадрового обечпечения | manual | 10d | 2026-05-11 A | 2026-05-22 A | 97 | 100% |  | 2026-05-11 | 2026-05-22 |  |  |  | SQB.AI | 80h | 80h |  | 4.2. | 2026-05-22 |  |
| 99 | 1.4.3 | Сформировать планы, программы обучения и развития DS/AI/ML. |  | 49.88d | 2026-05-25 A | 2026-07-31 | 97, 98 | 29% | 35.26d | 2026-05-25 | 2026-06-05 | 84d | 0d | finish no earlier than 2026-07-31 | SQB.AI | 399h | 116.9h |  | 4.3. | 2026-06-05 |  |
| 100 | 1.4.4 | Сформировать и организовать обновление портфеля обучающих программ по основным классам AI/ML задач в Банке. |  | 25d | 2026-06-30 A | 2026-08-04 A | 99 | 100% |  | 2026-06-08 | 2026-07-10 |  |  |  | SQB.AI | 200h | 200h |  | 4.5. | 2026-07-10 |  |
| 101 | 1.4.5 | Сформировать обучающие программы по базовым навыкам постановки и реализации задач в области DS/AI для бизнес-аналитиков ("разработчик AI продуктов", "архитектор данных", "инженер знаний" и др.) |  | 10d | 2026-07-31 | 2026-08-14 | 99 |  |  | 2026-06-08 | 2026-06-19 | 84d | 0d | finish no earlier than 2026-06-22 | SQB.AI | 80h |  |  | 4.4. | 2026-06-22 |  |
| 102 | 1.4.6 | Провести обучающие программы по базовым навыкам постановки и реализации задач в области DS/AI для бизнес-аналитиков ("разработчик AI продуктов", "архитектор данных", "инженер знаний" и др.) | manual | 91d | 2026-06-01 | 2026-10-05 |  |  |  | 2026-06-01 | 2026-10-02 |  |  |  | HR | 728h |  |  | 4.6. | 2026-10-05 |  |
| 103 | 1.4.7 | Организовать и провести массовое обучение цифровым компетенциям (экспертов, менеджеров, директоров). |  | 90d | 2026-08-04 | 2026-12-08 | 100 |  |  | 2026-07-13 | 2026-11-13 | 97d | 0d |  | HR | 720h |  | 1 | 4.7. | 2026-11-13 |  |
| 104 | 1.4.8 | **Провести или актуализировать выделение функциональных ролей, необходимых в рамках проекта по AI трансформации:** |  | 20d | 2026-08-04 | 2026-09-01 | 100 |  |  | 2026-07-13 | 2026-08-07 | 168d |  |  | SQB.AI | 320h |  | 1 |  |  |  |
| 105 | 1.4.8.1 | AI-лидер: Описание роли, функциональные обязанности, полномочия, должностные инструкции, матричные KPI |  | 3d | 2026-08-04 | 2026-08-07 | 98 |  |  |  |  | 168d | 0d |  | SQB.AI | 24h |  |  |  |  |  |
| 106 | 1.4.8.2 | Data-сайентист: Описание роли, функциональные обязанности, полномочия, должностные инструкции, матричные KPI |  | 3d | 2026-08-07 | 2026-08-12 | 98, 105 |  |  |  |  | 168d | 0d |  | SQB.AI | 24h |  |  |  |  |  |
| 107 | 1.4.8.3 | ML-разработчик: Описание роли, функциональные обязанности, полномочия, должностные инструкции, матричные KPI |  | 3d | 2026-08-12 | 2026-08-17 | 98, 106 |  |  |  |  | 168d | 0d |  | SQB.AI | 24h |  |  | 4.5. |  |  |
| 108 | 1.4.8.4 | Data-сайентист: Описание роли, функциональные обязанности, полномочия, должностные инструкции, матричные KPI |  | 3d | 2026-08-17 | 2026-08-20 | 98, 107 |  |  |  |  | 168d | 0d |  | SQB.AI | 24h |  |  |  |  |  |
| 109 | 1.4.8.5 | Data-инженер: Описание роли, функциональные обязанности, полномочия, должностные инструкции, матричные KPI |  | 3d | 2026-08-20 | 2026-08-25 | 98, 108 |  |  |  |  | 168d | 0d |  | SQB.AI | 24h |  |  |  |  |  |
| 110 | 1.4.8.6 | Аналитик данных: Описание роли, функциональные обязанности, полномочия, должностные инструкции, матричные KPI |  | 3d | 2026-08-25 | 2026-08-28 | 98, 109 |  |  |  |  | 168d | 0d |  | SQB.AI | 24h |  |  |  |  |  |
| 111 | 1.4.8.7 | Бизнес-аналитик: Описание роли, функциональные обязанности, полномочия, должностные инструкции, матричные KPI |  | 2d | 2026-08-28 | 2026-09-01 | 98, 110 |  |  |  |  | 168d |  |  | SQB.AI | 16h |  |  |  |  |  |
| 112 | 1.4.9 | Создать пространство для обучения и нетворкинга сотрудников, вовлечённых в AI-трансформацию. |  | 170d | 2026-05-11 | 2027-01-04 | 97 |  |  | 2026-05-11 | 2026-09-11 | 79d |  |  | OPS | 1360h |  |  | 4.8. | 2027-01-04 | Ср 30.12.26 |
| 113 | 1.4.10 | Провести повтороный асессмент и кластеризацию кадров Банка |  | 45d | 2026-10-06 | 2026-12-08 | 103FF |  |  | 2026-09-14 | 2026-11-13 | 97d | 0d |  | SQB.AI | 360h |  |  | 4.9. | 2026-11-13 |  |
| 114 | 1.4.11 | Завершение программы развития цифровых навыков в Банке | milestone, manual | 1d? | 2026-11-16 | 2026-11-16 | 113 |  |  | 2026-11-16 | 2026-11-16 |  |  |  |  |  |  |  | 4.10. | 2026-11-16 |  |
| 115 | 1.4.12 | Организовать присутствие Банка в высших учебных заведениях Узбекистана, для пропаганды ценностей Банка + привлечения талантов, продвижения Банка, как цифрового. |  | 45d | 2026-05-25 | 2026-07-24 | 98 |  |  | 2026-05-25 | 2026-07-24 | 194.88d |  |  | Маркетинг | 360h |  |  | 4.11. | 2026-07-24 |  |
| 116 | 1.5 | **ПРОЦЕССЫ** |  | 319.88d? | 2026-02-02 A | 2027-04-23 |  | 18% | 263.18d? | 2026-03-09 | 2027-02-01 | 0d |  |  | OPS | 15848.1h | 2342.8h | 1 |  |  |  |
| 117 | 1.5.1 | **Process review** |  | 319.88d | 2026-02-02 A | 2027-04-23 |  | 7% | 296.2d | 2026-03-16 | 2027-02-01 | 0d |  |  | OPS | 8174.96h | 481.97h | 1 |  |  |  |
| 118 | 1.5.1.1 | Завершить сбор и описание данных, источников данных, мест хранения и трансформации данных, используемых в процессах. |  | 216.88d | 2026-02-02 A | 2026-12-01 |  | 25% | 162.66d | 2026-03-16 | 2026-06-05 | 0d |  | finish no earlier than 2026-12-01 | OPS | 1735h | 433.75h |  | 5.1. | 2026-07-01 |  |
| 119 | 1.5.1.2 | Завершить описание процессов каждого бизнес-подразделения. |  | 216.88d | 2026-02-02 | 2026-12-01 | 118SS |  |  | 2026-03-16 | 2026-06-05 | 103d | 0d | finish no earlier than 2026-12-01 | Руководители | 1735h |  |  | 5.2. | 2026-06-10 |  |
| 120 | 1.5.1.3 | Провести review процессов, определить дублирующие, «тупиковые», «кольцевые», провести оптимизацию. |  | 238.88d | 2026-02-02 | 2026-12-31 | 119SS |  |  | 2026-06-08 | 2026-07-03 | 81d |  | finish no earlier than 2026-12-31 | OPS | 1911h |  |  | 5.3. | 2026-07-02 |  |
| 121 | 1.5.1.4 | Синхронизация с DataLake с базой знаний |  | 60d | 2027-01-29 | 2027-04-23 | 120FF, 64 |  |  | 2026-11-06 | 2027-01-29 | 0d |  |  | Руководители | 480h |  |  | 5.4. | 2027-02-02 |  |
| 122 | 1.5.1.5 | Оптимизация и цифровизация процессов завершена | milestone, manual | 0d | 2027-04-23 | 2027-04-23 | 121 |  |  | 2027-01-29 | 2027-02-01 |  |  |  |  |  |  |  | 5.5. | 2027-02-01 |  |

Notes:
- 118: опреационный деп хочет делать эту задачу до окнца года

| ID | WBS | Task | Type | Duration | Start | Finish | Predecessors | Complete | Remaining | Baseline start | Baseline finish | Total slack | Free slack | Constraint | Resources | Work | Actual work | В Презентацию | Текст10 | Дата2 | Текст2 |
| --- | --- | --- | --- | --- | --- | --- | --- | --- | --- | --- | --- | --- | --- | --- | --- | --- | --- | --- | --- | --- | --- |
| 123 | 1.5.2 | **Форимрование AI-лидеров** |  | 122.38d? | 2026-04-13 A | 2026-09-30 |  | 43% | 69.22d? | 2026-04-13 | 2026-09-04 | 146.5d |  |  | Руководители | 2266h | 984.22h | 1 |  |  |  |
| 124 | 1.5.2.1 | Определить AI-лидера каждого подразделения, либо блока |  | 54.88d | 2026-04-13 A | 2026-06-26 A | 97FF | 100% |  | 2026-04-13 | 2026-05-22 |  |  | finish no earlier than 2026-06-26 | Руководители | 439h | 439h |  | 5.6. | 2026-05-22 |  |
| 125 | 1.5.2.2 | Повышение квалификации AI-лидеров |  | 75d | 2026-05-25 A | 2026-09-30 | 124 | 20% | 60d | 2026-05-25 | 2026-09-04 | 146.5d | 0d |  | SQB.AI | 600h | 120h |  | 5.8. | 2026-09-04 |  |
| 126 | 1.5.2.3 | Провести обучение ключевых сотрудников, ответственных за улучшение процессов оценке эффективности, гэп-анализу, расчёту кейсов. |  | 30d | 2026-08-19 | 2026-09-30 | 124, 125FF |  |  | 2026-07-27 | 2026-09-04 | 146.5d | 0d |  | Finance | 240h |  |  | 5.9. | 2026-09-08 |  |
| 127 | 1.5.2.4 | В каждом блоке или департаменте работает AI-лидер | milestone, manual | 1d? | 2026-07-20 | 2026-07-20 | 126, 125, 124 |  |  | 2026-07-20 | 2026-07-20 |  |  |  | SQB.AI | 8h |  |  | 5.7. |  |  |
| 128 | 1.5.3 | **Инициативы и проекты** |  | 254.88d | 2026-03-09 A | 2027-02-26 |  | 57% | 109.9d | 2026-03-09 | 2026-12-29 | 40d |  |  |  | 1446h | 822.5h |  |  |  |  |
| 129 | 1.5.3.1 | Сформировать офис AI-трансформации Банка, определить метрики оценки зрелости, эффективности, организовать систему мониторинга. |  | 61.88d | 2026-04-06 A | 2026-06-30 |  | 50% | 30.94d | 2026-04-06 | 2026-04-24 | 0d |  | finish no earlier than 2026-06-30 | SQB.AI | 495h | 247.5h | 1 | 5.10. | 2026-04-24 |  |
| 130 | 1.5.3.2 | Сформировать пул инициатив по изменению и улучшению процессов с применением технологий AI. |  | 15d | 2026-04-27 A | 2026-05-15 A | 129 | 100% |  | 2026-04-27 | 2026-05-15 |  |  |  | SQB.AI | 120h | 120h |  | 5.11. | 2026-05-15 |  |
| 131 | 1.5.3.3 | Провести выделение пересекающихся инициатив, а также объединение сходных для достижения общего эффекта. |  | 15d | 2026-05-18 A | 2026-06-05 A | 130 | 100% |  | 2026-05-18 | 2026-06-05 |  |  |  | SQB.AI | 120h | 120h |  | 5.12. | 2026-06-05 |  |
| 132 | 1.5.3.4 | Организовать репозиторий идей в Базе знаний с целью переиспользования. |  | 20d | 2027-01-29 | 2027-02-26 | 129, 67, 64 |  |  | 2026-11-06 | 2026-12-04 | 40d |  |  | SQB.AI | 160h |  |  | 5.13. | 2026-12-28 |  |
| 133 | 1.5.3.5 | Выстроить управление проектами AI по решению приоритетных бизнес-задач |  | 30d | 2026-06-09 A | 2026-08-06 | 129, 131 | 10% | 27d | 2026-06-08 | 2026-07-17 | 186d | 0d | finish no earlier than 2026-07-21 | SQB.AI | 240h | 24h |  | 5.14. | 2026-07-21 |  |
| 134 | 1.5.3.6 | Организовано управление AI трансформацией | milestone, manual | 0d | 2026-08-06 | 2026-08-06 | 133 |  |  | 2026-07-20 | 2026-07-20 |  |  |  |  |  |  |  | 5.15. | 2026-07-20 |  |
| 135 | 1.5.3.7 | **Имиджевые быстрые проекты** |  | 38.88d | 2026-03-09 A | 2026-04-30 A |  | 100% |  | 2026-03-09 | 2026-12-29 |  |  |  |  | 311h | 311h |  | 5.16. | 2027-01-01 |  |
| 136 | 1.5.3.7.1 | Выбор базовой LLM с поддержкой узбекского языка |  | 38.88d | 2026-03-09 A | 2026-04-30 A |  | 100% |  | 2026-03-09 | 2026-04-10 |  |  | finish no earlier than 2026-04-30 | SQB.AI | 311h | 311h |  | 5.17. | 2026-04-30 |  |
| 137 | 1.5.4 | **Продуктовый подход** |  | 106d | 2026-07-31 | 2026-12-28 |  |  |  | 2026-06-08 | 2026-10-16 | 84d |  |  |  | 1648h |  |  |  |  |  |
| 138 | 1.5.4.1 | Выбор и развитие владельцев продуктов |  | 15d | 2026-07-31 | 2026-08-21 | 101FF+5d |  |  | 2026-06-08 | 2026-06-26 | 84d | 0d |  | Руководители | 120h |  |  | 5.47. | 2026-06-29 | Убрать Риски, первыми поставить AI/IT/Data |
| 139 | 1.5.4.2 | Организовать продуктовые команды в бизнес-подразделениях на основе метрик эффективности. |  | 45d | 2026-08-21 | 2026-10-23 | 138 |  |  | 2026-06-29 | 2026-08-28 | 84d | 0d |  | Руководители | 360h |  |  | 5.48. | 2026-08-31 | Убрать Риски |
| 140 | 1.5.4.3 | Провести обучение и соответствие программам развитие product ownews |  | 25d | 2026-09-18 | 2026-10-23 | 139FF |  |  | 2026-07-27 | 2026-08-28 | 84d | 0d |  | Руководители | 200h |  |  | 5.49. | 2026-08-31 | Убрать Риски |
| 141 | 1.5.4.4 | Разработать и внедрить процесс создания, оценки гипотез, выделения ресурсов под успешные гипотезы, бизнес-планирования и корректировок бюджета, реализации гипотез и оценки результатов. |  | 46d | 2026-10-23 | 2026-12-28 | 140 |  |  | 2026-08-31 | 2026-10-16 | 84d | 0d |  | Руководители | 368h |  |  | 5.50. | 2026-10-19 |  |
| 142 | 1.5.4.5 | Разработать и внедрить прозрачную методологию «Призового фонда» – финансовой мотивации продуктовых инициатив. |  | 25d | 2026-11-23 | 2026-12-28 | 141FF, 139 |  |  | 2026-09-14 | 2026-10-16 | 84d |  |  | Finance | 200h |  |  | 5.51. | 2026-10-19 |  |
| 143 | 1.5.4.6 | Организовать формирование и функционирование кросс-блочных DS/AI команд с ролями AI-лидера от бизнеса, AI как драйвера и IT как сервиса. |  | 50d | 2026-10-19 | 2026-12-28 | 141FF, 140FF, 138 |  |  | 2026-08-10 | 2026-10-16 | 84d | 0d |  | SQB.AI | 400h |  | 1 | 5.52. | 2026-10-19 |  |
| 144 | 1.5.4.7 | Реализован продуктовый поход в объёме MVP | milestone, manual | 0d | 2026-12-28 | 2026-12-28 | 143 |  |  |  |  |  |  |  |  |  |  |  | 5.53. | 2026-10-26 |  |
| 145 | 1.6 | **МЫШЛЕНИЕ И КУЛЬТУРА** |  | 165d | 2026-05-11 A | 2026-12-28 |  | 6% | 155.15d | 2026-05-11 | 2026-12-25 | 84d |  |  |  | 2344h | 140h | 1 |  |  |  |
| 146 | 1.6.1 | Сформировать и организовать функционирование DS&AI Community Банка. |  | 15d | 2026-05-11 A | 2026-06-01 A | 97 | 100% |  | 2026-05-11 | 2026-05-29 |  |  |  | SQB.AI | 120h | 120h | 1 | 6.1. | 2026-06-01 |  |
| 147 | 1.6.2 | Создать концепт "максимально возможно удобные и комфортные условия для работы «В офисе лучше, чем дома». |  | 30d | 2026-06-01 | 2026-07-13 | 146 |  |  | 2026-06-01 | 2026-07-10 | 84d | 0d | finish no earlier than 2026-07-10 | SQB.AI | 240h |  |  | 6.4. | 2026-07-13 |  |
| 148 | 1.6.3 | Переформатировать офисное пространство для SQB.AI, SQB.Data, SQB.Infra. |  | 120d | 2026-07-13 | 2026-12-28 | 147 |  |  | 2026-07-13 | 2026-12-25 | 84d |  |  | OPerations | 960h |  |  | 6.8. | 2026-12-28 |  |
| 149 | 1.6.4 | Организовать популяризацию культуры работы с данными и аналитикой. |  | 44d | 2026-06-01 A | 2026-07-31 | 146 | 1% | 43.5d | 2026-06-01 | 2026-06-05 | 190d |  |  | SQB.AI | 352h | 4h | 1 | 6.2. | 2026-06-08 |  |
| 150 | 1.6.5 | Организовать и поддерживать пространство для обучения и нетворкинга сотрудников, вовлечённых в AI-трансформацию. |  | 15d | 2026-06-22 | 2026-07-13 | 147FF |  |  | 2026-06-22 | 2026-07-10 | 189d | 0d |  | SQB.AI | 120h |  |  | 6.5. | 2026-07-13 |  |
| 151 | 1.6.6 | Обеспечить участие в максимальном количестве внешних мероприятий для повышения нетворка сотрудников, повышения их квалификации и продвижения Банка. |  | 10d | 2026-07-13 | 2026-07-27 | 150 |  |  | 2026-07-13 | 2026-07-24 | 194d |  |  | Маркетинг | 80h |  |  | 6.6. | 2026-07-27 |  |
| 152 | 1.6.7 | Разработать и внедрить механизмы поощрения экспертов с высоким рейтингом (благодарности, leaderboards, achieves, специальный мерч). |  | 44d | 2026-06-01 A | 2026-07-31 | 146 | 5% | 42d | 2026-06-01 | 2026-06-26 | 175d | 0d |  | SQB.AI | 352h | 16h |  | 6.3. | 2026-06-29 |  |
| 153 | 1.6.8 | Привлекать экспертов для формирования дайджестов с вопросами в целях получения широкой палитры мнений. |  | 15d | 2026-07-31 | 2026-08-21 | 150, 152 |  |  | 2026-07-13 | 2026-07-31 | 175d |  |  | Маркетинг | 120h |  |  | 6.7. | 2026-08-03 |  |

| ID | WBS | Task | Duration | Start | Finish | Predecessors | Complete | Remaining | Baseline start | Baseline finish | Total slack | Free slack | Constraint | Resources | Work | Actual work | В Презентацию | Текст10 | Дата2 |
| --- | --- | --- | --- | --- | --- | --- | --- | --- | --- | --- | --- | --- | --- | --- | --- | --- | --- | --- | --- |
| 154 | 1.7 | **ЛИДЕРСТВО** | 101d | 2026-05-18 A | 2026-10-05 |  | 12% | 88.77d | 2026-05-18 | 2026-09-02 | 143.88d |  |  |  | 1156h | 140h | 1 |  |  |
| 155 | 1.7.1 | Утвердить методологию расчёта и регулярной оценки индекса AI-зрелости для подразделений Банка. | 15d | 2026-05-18 A | 2026-06-05 A | 130 | 100% |  | 2026-05-18 | 2026-06-05 |  |  |  | SQB.AI | 120h | 120h | 1 | 7.1. | 2026-06-05 |
| 156 | 1.7.2 | Установить для руководителей подразделений, директоров и топ-менеджмента долю KPI по выполнению целей по AI-трансформации не менее 25% от общего объёма KPI. | 26d | 2026-06-08 | 2026-07-13 | 155 |  |  | 2026-06-08 | 2026-06-12 | 203.88d |  |  | HR | 208h |  |  | 7.2. | 2026-07-13 |
| 157 | 1.7.3 | Установить мотивационную долю KPI при успешном выполнении целей по AI-трансформации в 50% от общего объёма KPI. | 28.5d | 2026-06-01 A | 2026-07-13 | 155 | 9% | 26d | 2026-06-01 | 2026-06-10 | 143.88d | 0d | finish no earlier than 2026-07-13 | HR | 228h | 20h |  | 7.3. | 2026-07-01 |
| 158 | 1.7.4 | Сформировать и реализовать программу участия топ-менеджмента банка в мероприятиях по продвижению AI-трансформации. | 15d | 2026-07-14 | 2026-08-03 | 157 |  |  | 2026-06-10 | 2026-07-01 | 188.88d |  |  | Маркетинг | 120h |  | 1 | 7.4. | 2026-07-01 |
| 159 | 1.7.5 | Разработка внутреннего кодекса этики AI и обеспечение его работы | 60d | 2026-07-14 | 2026-10-05 | 157 |  |  | 2026-06-10 | 2026-09-02 | 143.88d |  |  | Департамент стратегии | 480h |  | 1 | 7.5. | 2026-09-02 |
